# SIDISVA — Plan implementare 10 luni

Schedule from MS Project XML, 2026-06-01 to 2027-03-05.
Contract SIDISVA (CS §7.3: max 18 luni — ofertă: 10 luni)
VOGO TECHNOLOGY

## Calendars

- Standard: Mon-Fri 08:00-12:00, 13:00-17:00; Sat-Sun off.

## Schedule

| ID | WBS | Task | Type | Duration | Start | Finish | Constraint |
| --- | --- | --- | --- | --- | --- | --- | --- |
| 1 | 1 | **A0 — KICKOFF & MANAGEMENT PROIECT** |  |  | 2026-06-01 | 2027-03-05 |  |
| 2 | 1.1 | Kickoff, mobilizare echipă & plan detaliat | manual | 20d | 2026-06-01 | 2026-06-26 | start no earlier than 2026-06-01 |
| 3 | 1.2 | Management proiect, riscuri & rapoarte progres | manual | 180d | 2026-06-29 | 2027-03-05 | start no earlier than 2026-06-29 |
| 4 | 2 | **A1 — LIVRARE, INSTALARE, CONFIGURARE HW & SW DE BAZĂ** |  |  | 2026-06-29 | 2026-10-16 |  |
| 5 | 2.1 | Livrare echipamente hardware (servere, rețea, sec.) [TF=2] | manual | 60d | 2026-06-29 | 2026-09-18 | start no earlier than 2026-06-29 |
| 6 | 2.2 | Instalare & configurare hardware la Cloud Gov. [TF=2] | manual | 20d | 2026-09-21 | 2026-10-16 | start no earlier than 2026-09-21 |
| 7 | 2.3 | Instalare SW de bază (OS, BD, middleware, proxy) [TF=2] | manual | 20d | 2026-09-21 | 2026-10-16 | start no earlier than 2026-09-21 |
| 8 | 3 | **A2 — ANALIZĂ SISTEM [CS MAX L6 → OFERTĂ L3]** |  |  | 2026-06-29 | 2026-08-21 |  |
| 9 | 3.1 | Analiza cerințelor funcționale (14 module) | manual | 40d | 2026-06-29 | 2026-08-21 | start no earlier than 2026-06-29 |
| 10 | 3.2 | Analiza cerințelor tehnice, securitate & Cloud | manual | 40d | 2026-06-29 | 2026-08-21 | start no earlier than 2026-06-29 |
| 11 | 3.3 | Analiza integrărilor externe & Cloud Gov. [TF=3] | manual | 40d | 2026-06-29 | 2026-08-21 | start no earlier than 2026-06-29 |
| 12 | 4 | **A3 — PROIECTARE SISTEM [CS MAX L7 → OFERTĂ L4]** |  |  | 2026-08-24 | 2026-09-18 |  |
| 13 | 4.1 | Arhitectura sistem (micro-servicii, API, Cloud) | manual | 20d | 2026-08-24 | 2026-09-18 | start no earlier than 2026-08-24 |
| 14 | 4.2 | Design UI/UX, modele date & specificații sec. | manual | 20d | 2026-08-24 | 2026-09-18 | start no earlier than 2026-08-24 |
| 15 | 5 | **A4 — DEZVOLTARE / CONFIGURARE / INTEGRARE SW [CS MAX L15 → OFERTĂ L8]** |  |  | 2026-09-21 | 2027-01-08 |  |
| 16 | 5.1 | LIMS + DMS + Portal Servicii Publice | manual | 80d | 2026-09-21 | 2027-01-08 | start no earlier than 2026-09-21 |
| 17 | 5.2 | BND-SNIIA + Aplicație Mobilă animale sălbatice | manual | 80d | 2026-09-21 | 2027-01-08 | start no earlier than 2026-09-21 |
| 18 | 5.3 | GIS + Catagrafie + Supraveghere & Anchete | manual | 80d | 2026-09-21 | 2027-01-08 | start no earlier than 2026-09-21 |
| 19 | 5.4 | Dashboard + Raportare + Autorizare + Instruire | manual | 80d | 2026-09-21 | 2027-01-08 | start no earlier than 2026-09-21 |
| 20 | 5.5 | Integrări externe (ROeID, APIA, ONRC, ANCPI, PNI...) [TF=2] | manual | 40d | 2026-09-21 | 2026-11-13 | start no earlier than 2026-09-21 |
| 21 | 6 | **A5 — MIGRARE DATE [CS MAX L16 → OFERTĂ L9]** |  |  | 2027-01-11 | 2027-02-05 |  |
| 22 | 6.1 | Migrare date existente în SIDISVA | manual | 20d | 2027-01-11 | 2027-02-05 | start no earlier than 2027-01-11 |
| 23 | 7 | **A6 — IMPLEMENTARE [CS MAX L17 → OFERTĂ L9]** |  |  | 2027-01-11 | 2027-02-05 |  |
| 24 | 7.1 | Implementare SIDISVA în Cloud Guvernamental | manual | 20d | 2027-01-11 | 2027-02-05 | start no earlier than 2027-01-11 |

| ID | WBS | Task | Type | Duration | Start | Finish | Constraint |
| --- | --- | --- | --- | --- | --- | --- | --- |
| 25 | 8 | **A7 — TESTARE SISTEM [CS MAX L18 → OFERTĂ L10]** |  |  | 2027-02-08 | 2027-03-05 |  |
| 26 | 8.1 | Testare funcțională completă + UAT | manual | 20d | 2027-02-08 | 2027-03-05 | start no earlier than 2027-02-08 |
| 27 | 8.2 | Testare performanță, sarcină & securitate (DNSC) | manual | 20d | 2027-02-08 | 2027-03-05 | start no earlier than 2027-02-08 |
