# GanttCPM_SIDISVA_10luni

Schedule from MS Project XML, 2026-06-01 to 2027-03-05.

## Calendars

- Standard[Imported]: Mon-Fri 08:00-12:00, 13:00-17:00; Sat-Sun off.

## Resources

| Resource |
| --- |
| Unassigned |

## Schedule

| ID | WBS | Task | Duration | Start | Finish | Predecessors |
| --- | --- | --- | --- | --- | --- | --- |
| 1 | 1 | **A0 — KICKOFF & MANAGEMENT PROIECT** | 200d | 2026-06-01 | 2027-03-05 |  |
| 2 | 1.1 | Kickoff, mobilizare echipă & plan detaliat | 20d | 2026-06-01 | 2026-06-26 |  |
| 3 | 1.2 | Management proiect, riscuri & rapoarte progres | 180d | 2026-06-29 | 2027-03-05 | 2 |
| 4 | 2 | **A1 — LIVRARE, INSTALARE, CONFIGURARE HW & SW DE BAZĂ** | 100d | 2026-06-29 | 2026-11-13 |  |
| 5 | 2.1 | Livrare echipamente hardware (servere, rețea, sec.) | 60d | 2026-06-29 | 2026-09-18 | 2 |
| 6 | 2.2 | Instalare & configurare hardware la Cloud Gov. | 20d | 2026-09-21 | 2026-10-16 | 5 |
| 7 | 2.3 | Instalare SW de bază (OS, BD, middleware, proxy) | 20d | 2026-10-19 | 2026-11-13 | 6 |
| 8 | 3 | **A2 — ANALIZĂ SISTEM [CS MAX L6 → OFERTĂ L3]** | 40d | 2026-06-29 | 2026-08-21 |  |
| 9 | 3.1 | Analiza cerințelor funcționale (14 module) | 40d | 2026-06-29 | 2026-08-21 | 2 |
| 10 | 3.2 | Analiza cerințelor tehnice, securitate & Cloud | 40d | 2026-06-29 | 2026-08-21 | 2 |
| 11 | 3.3 | Analiza integrărilor externe & Cloud Gov. | 40d | 2026-06-29 | 2026-08-21 | 2 |
| 12 | 4 | **A3 — PROIECTARE SISTEM [CS MAX L7 → OFERTĂ L4]** | 20d | 2026-08-24 | 2026-09-18 |  |
| 13 | 4.1 | Arhitectura sistem (micro-servicii, API, Cloud) | 20d | 2026-08-24 | 2026-09-18 | 9, 10 |
| 14 | 4.2 | Design UI/UX, modele date & specificații sec. | 20d | 2026-08-24 | 2026-09-18 | 9, 10 |
| 15 | 5 | **A4 — DEZVOLTARE / CONFIGURARE / INTEGRARE SW [CS MAX L15 → OFERTĂ L8]** | 80d | 2026-09-21 | 2027-01-08 |  |
| 16 | 5.1 | LIMS + DMS + Portal Servicii Publice | 80d | 2026-09-21 | 2027-01-08 | 13, 14 |
| 17 | 5.2 | BND-SNIIA + Aplicație Mobilă animale sălbatice | 80d | 2026-09-21 | 2027-01-08 | 13, 14 |
| 18 | 5.3 | GIS + Catagrafie + Supraveghere & Anchete | 80d | 2026-09-21 | 2027-01-08 | 13, 14 |
| 19 | 5.4 | Dashboard + Raportare + Autorizare + Instruire | 80d | 2026-09-21 | 2027-01-08 | 13, 14 |
| 20 | 5.5 | Integrări externe (ROeID, APIA, ONRC, ANCPI, PNI...) | 40d | 2026-09-21 | 2026-11-13 | 11, 13, 14 |
| 21 | 6 | **A5 — MIGRARE DATE [CS MAX L16 → OFERTĂ L9]** | 20d | 2027-01-11 | 2027-02-05 |  |
| 22 | 6.1 | Migrare date existente în SIDISVA | 20d | 2027-01-11 | 2027-02-05 | 16, 17, 18, 19, 20 |
| 23 | 7 | **A6 — IMPLEMENTARE [CS MAX L17 → OFERTĂ L9]** | 20d | 2027-01-11 | 2027-02-05 |  |
| 24 | 7.1 | Implementare SIDISVA în Cloud Guvernamental | 20d | 2027-01-11 | 2027-02-05 | 7, 16, 17, 18, 19 |

| ID | WBS | Task | Type | Duration | Start | Finish | Predecessors |
| --- | --- | --- | --- | --- | --- | --- | --- |
| 25 | 8 | **A7 — TESTARE SISTEM [CS MAX L18 → OFERTĂ L10]** |  | 20d | 2027-02-08 | 2027-03-05 |  |
| 26 | 8.1 | Testare funcțională completă + UAT |  | 20d | 2027-02-08 | 2027-03-05 | 22, 24 |
| 27 | 8.2 | Testare performanță, sarcină & securitate (DNSC) |  | 20d | 2027-02-08 | 2027-03-05 | 24 |
| 28 | 9 | **A8 — INSTRUIRE UTILIZATORI [CS MAX L18 → OFERTĂ L10]** |  | 120d | 2026-09-21 | 2027-03-05 |  |
| 29 | 9.1 | Pregătire materiale instruire & manuale utilizator |  | 20d | 2026-09-21 | 2026-10-16 | 13, 14 |
| 30 | 9.2 | Sesiuni instruire administratori & utilizatori finali |  | 20d | 2027-02-08 | 2027-03-05 | 24, 29 |
| 31 | 10 | **A9 — PUNERE ÎN PRODUCȚIE — GO-LIVE** |  | 0d | 2027-03-05 | 2027-03-05 |  |
| 32 | 10.1 | GO-LIVE SIDISVA + Recepție Finală Contract | milestone | 0d | 2027-03-05 | 2027-03-05 | 26, 27, 30 |
